Schedule from MS Project, 2026-01-07 to 2026-03-25, status date 2026-01-07.

## Calendars

- Standard: Mon-Fri 08:00-12:00, 13:00-17:00; Sat-Sun off.

## Resources

| Resource |
| --- |
| PMO |
| ChipXpert |
| Takas |
| DWH |
| OLTP |
| Issuing DebitPrepaid |
| Project Management |
| Kart Operasyon |
| Fraud Operasyon |
| Takas Operasyon |
| Chargeback Operasyon |
| Kurum |
| Network |
| SistemOperasyon |
| Satış |
| Kart Basım Firması |
| Key Management Officer |
| DevOps |
| 3rd Partiler |
| CleverAct |
| Issuing Credit |
| CallCenter |
| Mastercard |
| BKM |
| VISA |
| BasımOfisi |
| Fraud |
| Troy |
| PY |
| Müşteri |
| Anahtar Yönetimi HSM Ekibi |
| Ocean Kart Yönetim Ekibi |
| ChipXpert Ekibi |
| Sistem Operasyon Ekibi |
| FIME |
| İdari İşler |
| Sistem Monitoring |
| Kart Basım Ofisi |
| On Boarding Ekibi |
| Kurum |
| PayCore |
| Kurum |
| Proje Yöneticisi |
| Nisa Karamemiş (PY) |
| Seden Çimen (PO) |
| Bilal Yenal (SisOps) |
| Operasyon |
| Mehmet Karahasan (PO) |
| Damla Bayraktar (PO) |
| Eren Şapcı (PO) |
| Adem Öcalan |
| Zeynep Özençman (Mngr) |
| Erdem Eminağa (KMO) |
| Çağlar Şahin (Mngr) |
| Yusuf Kılıç (DevOps) |
| Mehmet Cemal Kelleci (CX) |
| Timur Bozkurtoğulları (Mngr) |
| İbrahim Hakkı Göğüs |

## Schedule

| ID | WBS | Task | Duration | Start | Finish | Predecessors | Total slack | Free slack | Constraint | Resources | Work |
| --- | --- | --- | --- | --- | --- | --- | --- | --- | --- | --- | --- |
| 1 | 1 | **Troy Draft Proje Planı** | 56d | 2026-01-07 | 2026-03-25 |  | 0d |  |  |  | 3548h |
| 2 | 1.1 | Proje Başlangıç | 1d | 2026-01-07 | 2026-01-07 |  | 0d |  |  | Kurum; PayCore | 16h |
| 3 | 1.2 | **1. Teknik Ön Hazırlıklar** | 18d | 2026-01-07 | 2026-01-30 |  | 1d |  |  |  | 608h |
| 4 | 1.2.1 | Kurum Tarafından Ön Hazırlıkların Tamamlanması | 1d | 2026-01-07 | 2026-01-07 |  | 55d |  |  | Kurum | 8h |
| 5 | 1.2.2 | PayCore Tarafından Yapılması Gereken Kapsam Belirleme Çalışmaları | 1d | 2026-01-07 | 2026-01-07 |  | 55d |  |  | Nisa Karamemiş (PY) | 8h |
| 6 | 1.2.3 | Kickoff Toplantısı | 1d | 2026-01-13 | 2026-01-13 | 2FS+3d | 49d | 0d |  | Kurum; Nisa Karamemiş (PY) | 16h |
| 7 | 1.2.4 | Proje Planının Son Haline Getirilmesi | 2d | 2026-01-14 | 2026-01-15 | 6 | 49d |  | start no earlier than 2026-01-08 | Nisa Karamemiş (PY) | 16h |
| 8 | 1.2.5 | **Test Ortam Parametre Tanımlamaları** | 8d | 2026-01-07 | 2026-01-16 |  | 7.25d | 0d |  |  | 64h |
| 9 | 1.2.5.1 | Kurum Parametre Dokümanının Doldurulması | 5d | 2026-01-07 | 2026-01-13 |  | 7.25d | 0d |  | Kurum | 40h |
| 10 | 1.2.5.2 | Default Tanımların Script ile Oceanda Yapılması | 1d | 2026-01-14 | 2026-01-14 | 9 | 7.25d | 0d |  | Seden Çimen (PO) | 8h |
| 11 | 1.2.5.3 | Parametre Tanımlarının Yapılması | 2d | 2026-01-15 | 2026-01-16 | 10 | 7.25d |  |  | Nisa Karamemiş (PY) | 16h |
| 12 | 1.2.6 | **S2S VPN Bağlantısı** | 4d | 2026-01-07 | 2026-01-12 |  | 52d |  |  |  | 64h |
| 13 | 1.2.6.1 | S2S VPN ve IP Sec Tünel Kurulumları (Network) | 2d | 2026-01-07 | 2026-01-08 |  | 52d | 0d |  | Network; Kurum | 32h |
| 14 | 1.2.6.2 | Erişim Kontrolleri (Network) | 2d | 2026-01-09 | 2026-01-12 | 13 | 52d |  |  | Kurum; Network | 32h |
| 15 | 1.2.7 | **FTP Tanımları** | 6d | 2026-01-07 | 2026-01-14 |  | 50d |  |  |  | 24h |
| 16 | 1.2.7.1 | SFTP Formunun Kurumla Paylaşılması | 3d | 2026-01-07 | 2026-01-09 |  | 50d | 0d |  |  |  |
| 17 | 1.2.7.2 | Sistem Operasyon Ekibine FTP Formunun İletilmesi | 1d | 2026-01-12 | 2026-01-12 | 2, 16 | 50d | 0d |  | Nisa Karamemiş (PY) | 8h |
| 18 | 1.2.7.3 | SFTP Erişim Yetkilerinin Verilmesi | 2d | 2026-01-13 | 2026-01-14 | 17 | 50d |  |  | Bilal Yenal (SisOps) | 16h |
| 19 | 1.2.8 | **Kuruma Dokümanların İletilmesi** | 3d | 2026-01-08 | 2026-01-12 | 2 | 0d |  |  |  | 112h |
| 20 | 1.2.8.1 | Swagger Dokümanlarının Paylaşılması | 1d | 2026-01-08 | 2026-01-08 |  | 2d |  |  | Nisa Karamemiş (PY) | 8h |
| 21 | 1.2.8.2 | Ocean - Bankacılık Sistemlerinin Entegrasyonu Dokümanlarının Paylaşılması | 1d | 2026-01-08 | 2026-01-08 |  | 2d |  |  | Nisa Karamemiş (PY) | 8h |
| 22 | 1.2.8.3 | Ocean ve Swagger Linklerinin Paylaşımı | 1d | 2026-01-08 | 2026-01-08 |  | 2d |  |  | Nisa Karamemiş (PY) | 8h |
| 23 | 1.2.8.4 | ACC Takas Dosya Desenleri Paylaşılması | 1d | 2026-01-08 | 2026-01-08 |  | 2d |  |  | Nisa Karamemiş (PY) | 8h |
| 24 | 1.2.8.5 | Card Transaction Dosya Deseni Paylaşılması | 1d | 2026-01-08 | 2026-01-08 |  | 2d |  |  | Nisa Karamemiş (PY) | 8h |
| 25 | 1.2.8.6 | Standart Fraud Senaryoları Paylaşılması | 1d | 2026-01-08 | 2026-01-08 |  | 2d |  |  | Nisa Karamemiş (PY) | 8h |
| 26 | 1.2.8.7 | Mevcutta Çalıştığımız Hizmet Sağlayıcıların İletişim Bilgileri (Kurye, SMS, Kart Basım Firmaları) | 1d | 2026-01-08 | 2026-01-08 |  | 2d |  |  | Nisa Karamemiş (PY) | 8h |
| 27 | 1.2.8.8 | Yasal Raporlar Listesi | 1d | 2026-01-08 | 2026-01-08 |  | 2d |  |  | Nisa Karamemiş (PY) | 8h |
| 28 | 1.2.8.9 | Standart Üretilen Ocean DWH Rapor Listesi | 1d | 2026-01-08 | 2026-01-08 |  | 2d |  |  | Nisa Karamemiş (PY) | 8h |
| 29 | 1.2.8.10 | Takas Validasyon Kodlarının İletilmesi | 1d | 2026-01-08 | 2026-01-08 |  | 2d |  |  | Nisa Karamemiş (PY) | 8h |

Notes:
- 4: ·Kart Şemasının Seçimi / ·Kurumun BIN Başvurusunda Bulunması / ·Kurumun BIN Paylaşması / Fiziksel Kart Basım için Yapılması Gereken Hazırlıklar/ ·Chip LOA Formunun İletimesi / ·Kart Basım Firmasının Belirlenmesi / ·Kart Dizaynının Belirlenmesi / ·Kart Dizayn Sertifikasyonu / ·Kullanılacak kartın çipi ve Şeması Hakkında Allign olma toplantısı / ·Kart Firmasına Fiziksel Kart Siparişinin Verilmesi / ·Kart Firması Stoklarına Kartın Girişi (Basım için Ön Koşul) / ·Kurye SMS Servisi Hizmeti Alınacak mı? / Sertifikasyonların Başlatılması için Müşterinin Tamamlaması Gerekenler/ ·Debit Otorizasyon Servislerinin Entegrasyonu (Sertifikasyon Ön Koşul) / ·Banka SMS Servisinin Entegrasyonu / ·Takas Hesaplarının Açılması
- 5: ·Desteklenecek İlem Tiplerinin ve Gereksinimlerin Kontrol Edilmesi ( Kampanya, Loyalty Program, Marka Paylaşımı ?, İndirim, Anında Basım - Toplu Basım) / ·Sözleşme İmzalandı mı? / ·Gizlilik Sözleşmesi İmzalandı mı? / ·Sözleşme Kapsamında Fraud Desteğinin Bulunup Bulunmadığının Kontrol Edilmesi / ·Taslak Proje Planının Oluşturulması ve Paylaşılması / ·Kurum Projesinin Jirada Açılması
- 10: Kurum tanımlaması yapılır.
- 14: Swagger servislerine ve Ocean ekranlarına erişilebiliyor mu? Kontrol edilmelidir.
- 27: Gün sonu - ~GECE 12:00 'den sonra~ / BKM - ERTESİ GÜN 3'E KADAR / VISA - ERTESİ GÜN 5'E KADAR / MC - ERTESİ GÜN 7'E KADAR
- 28: Artı Bakiye / Cevap Kodlarına Göre İlem Adedi / Extre Tüm Liste (Önceki Ekstreler Dahil) / İlem Adedi ve İlem Hacmi (This Month to Day) / İlem Detayı ( This Month to Day) / Kart Bakiye Listesi / Kart Listesi / Kart ve Müşteri Sayısı / Müşteri Listesi
- 29: Incoming Dosya Yüklemedeki Validasyonların Belirlenmesi

| ID | WBS | Task | Duration | Start | Finish | Predecessors | Total slack | Free slack | Resources | Work |
| --- | --- | --- | --- | --- | --- | --- | --- | --- | --- | --- |
| 30 | 1.2.8.11 | **Uygulama Esasları Dokümantasyon Çalışmaları** | 3d | 2026-01-08 | 2026-01-12 |  | 0d |  |  | 32h |
| 31 | 1.2.8.11.1 | Uygulama Esasları Dokümanının Müşteri ile Paylaşılması | 1d | 2026-01-08 | 2026-01-08 |  | 2d |  | Satış | 8h |
| 32 | 1.2.8.11.2 | Uygulama Esaslarının Müşteri İhtiyaçlarına Göre Uyarlanması | 3d | 2026-01-08 | 2026-01-12 |  | 0d |  | Operasyon | 24h |
| 33 | 1.2.9 | **Kurum Workshoplarının Yapılması** | 11d | 2026-01-15 | 2026-01-29 |  | 0d |  |  | 80h |
| 34 | 1.2.9.1 | Swagger Servis Anlatımı | 2d | 2026-01-15 | 2026-01-16 | 19FS+2d | 9d | 0d | Seden Çimen (PO) | 16h |
| 35 | 1.2.9.2 | Debit Auth Entegrasyon Workshop | 2d | 2026-01-16 | 2026-01-19 | 19FS+3d | 0d |  | Mehmet Karahasan (PO) | 16h |
| 36 | 1.2.9.3 | BKM Simülatör Eğitimi | 2d | 2026-01-22 | 2026-01-23 | 35FS+2d | 0d |  | Mehmet Karahasan (PO) | 16h |
| 37 | 1.2.9.4 | Card Transaction Dosya Desen Anlatımı | 2d | 2026-01-28 | 2026-01-29 | 36FS+2d | 0d |  | Damla Bayraktar (PO) | 16h |
| 38 | 1.2.9.5 | ACC Takas Dosya Desen Anlatımı | 2d | 2026-01-28 | 2026-01-29 | 36FS+2d | 0d |  | Eren Şapcı (PO) | 16h |
| 39 | 1.2.10 | **Uygulama Ekipleri Test Ortam Tanımları** | 10d | 2026-01-19 | 2026-01-30 |  | 20d |  |  | 216h |
| 40 | 1.2.10.1 | **Günsonu Tanımları** | 10d | 2026-01-19 | 2026-01-30 |  | 20d | 0d |  | 144h |
| 41 | 1.2.10.1.1 | Job Chain Tanımlarının Test Ortamda Yapılması | 4d | 2026-01-19 | 2026-01-22 | 8 | 20d | 0d | Seden Çimen (PO); Eren Şapcı (PO); Damla Bayraktar (PO) | 96h |
| 42 | 1.2.10.1.2 | Job Chain Tanımlarının Prod Ortamda Yapılması | 2d | 2026-01-23 | 2026-01-26 | 41 | 20d | 0d | Zeynep Özençman (Mngr) | 16h |
| 43 | 1.2.10.1.3 | Control M Tanımları için Dosyanın Devops'a Gönderilmesi | 1d | 2026-01-27 | 2026-01-27 | 42 | 20d | 0d | Nisa Karamemiş (PY) | 8h |
| 44 | 1.2.10.1.4 | Control M Tanımlarının Yapılması | 3d | 2026-01-28 | 2026-01-30 | 43 | 20d | 0d | Yusuf Kılıç (DevOps) | 24h |
| 45 | 1.2.10.1.5 | Kart Basımı için Control M Tanımlarının Yapılması | 3d | 2026-01-28 | 2026-01-30 | 43 | 38d |  |  |  |
| 46 | 1.2.10.2 | Ocean Test Ortam Switch Routing Tanımları | 3d | 2026-01-19 | 2026-01-21 | 8 | 45d |  | Mehmet Karahasan (PO) | 24h |
| 47 | 1.2.10.3 | Ocean Test Ortam Fraud Senaryo Tanımları | 3d | 2026-01-19 | 2026-01-21 | 8, 25 | 45d |  | Adem Öcalan | 24h |
| 48 | 1.2.10.4 | Ocean Test Ortam DWH Tanımları | 3d | 2026-01-19 | 2026-01-21 | 8 | 45d |  | Çağlar Şahin (Mngr) | 24h |
| 49 | 1.3 | **2. Kurum Entegrasyonları** | 32d | 2026-01-19 | 2026-03-03 | 8 | 0d |  |  | 1080h |
| 50 | 1.3.1 | **Müşteri/Kart Entegrasyonlarının Yapılması** | 11d | 2026-01-19 | 2026-02-02 |  | 11d | 0d |  | 120h |
| 51 | 1.3.1.1 | Müşteri Oluşturma | 4d | 2026-01-19 | 2026-01-22 | 20, 34 | 11d | 0d | Kurum | 32h |
| 52 | 1.3.1.2 | Kart Oluşturma | 4d | 2026-01-19 | 2026-01-22 | 20, 34 | 11d | 0d | Kurum | 32h |
| 53 | 1.3.1.3 | Diğer Servis Entegrasyonlarının Tamamlanması | 7d | 2026-01-23 | 2026-02-02 | 51, 52 | 11d |  | Kurum | 56h |

| ID | WBS | Task | Duration | Start | Finish | Predecessors | Total slack | Free slack | Resources | Work |
| --- | --- | --- | --- | --- | --- | --- | --- | --- | --- | --- |
| 54 | 1.3.2 | **3rd Parti Entegrasyonları** | 15d | 2026-01-19 | 2026-02-06 |  | 15d |  |  | 160h |
| 55 | 1.3.2.1 | Kart Basim Firması Entegrasyonu (Mevcut firma değilse) | 5d | 2026-01-19 | 2026-01-23 |  | 15d | 0d | Kurum | 40h |
| 56 | 1.3.2.2 | Kurye Entegrasyonu (Mevcut firma değilse) | 5d | 2026-01-26 | 2026-01-30 | 55 | 15d | 0d | Kurum | 40h |
| 57 | 1.3.2.3 | SMS Servisi Entegrasyonu | 5d | 2026-02-02 | 2026-02-06 | 56 | 15d | 0d | Kurum; Seden Çimen (PO) | 80h |
| 58 | 1.3.3 | **Otorizasyon Entegrasyonları** | 22d | 2026-01-19 | 2026-02-17 |  | 0d |  |  | 184h |
| 59 | 1.3.3.1 | OTC ve OTS Kodlarının Müşteri ile Paylaşılması | 1d | 2026-01-30 | 2026-01-30 | 33 | 0d |  | Mehmet Karahasan (PO) | 8h |
| 60 | 1.3.3.2 | Debit Otorizasyon Servislerinin Geliştirilmesi | 7d | 2026-02-02 | 2026-02-10 | 35, 59 | 0d |  | Kurum | 56h |
| 61 | 1.3.3.3 | Issuing Otorizasyon Testleri | 5d | 2026-02-11 | 2026-02-17 | 59, 60 | 0d |  | Mehmet Karahasan (PO); Kurum | 80h |
| 62 | 1.3.3.4 | Ücret Testleri | 5d | 2026-01-19 | 2026-01-23 |  | 17d |  | Mehmet Karahasan (PO) | 40h |
| 63 | 1.3.4 | **Muhasebe Yapısı** | 5d | 2026-02-18 | 2026-02-24 |  | 3d | 0d |  | 40h |
| 64 | 1.3.4.1 | Kurum Muhasabe ve Mutabakat Yapısının Tamamlanması | 5d | 2026-02-18 | 2026-02-24 | 58, 23 | 3d |  | Kurum | 40h |
| 65 | 1.3.5 | **Takas Çalışmaları** | 10d | 2026-02-18 | 2026-03-03 | 50, 58 | 0d |  |  | 192h |
| 66 | 1.3.5.1 | Incoming Dosya Yüklemedeki Validasyonların Belirlenmesi | 10d | 2026-02-18 | 2026-03-03 |  | 0d |  | Kurum | 80h |
| 67 | 1.3.5.2 | BKM Günsonu Adımlarının Tanımlanması ve Control M Excelinin Oluşturulması | 3d | 2026-02-18 | 2026-02-20 | 41SS | 7d |  | Eren Şapcı (PO); Kurum | 48h |
| 68 | 1.3.5.3 | Ocean Test Ortam Takas & Dispute Parametre Tanımları | 2d | 2026-02-18 | 2026-02-19 |  | 8d |  | Takas Operasyon | 16h |
| 69 | 1.3.5.4 | Incoming Dosya Yükleme Testlerinin Yapılması | 2d | 2026-02-18 | 2026-02-19 |  | 8d |  | Eren Şapcı (PO); Kurum | 32h |
| 70 | 1.3.5.5 | BKM Chargeback Testleri | 1d | 2026-02-18 | 2026-02-18 |  | 9d |  | Takas Operasyon | 8h |
| 71 | 1.3.5.6 | ACC Dosya Testleri | 1d | 2026-02-18 | 2026-02-18 |  | 9d |  | Eren Şapcı (PO) | 8h |
| 72 | 1.3.6 | **Yasal Raporlar Entegrasyonu** | 20d | 2026-01-19 | 2026-02-13 |  | 12d |  |  | 208h |
| 73 | 1.3.6.1 | Raporların Günsonu Ağacına Eklenmesi | 2d | 2026-01-19 | 2026-01-20 | 40SS | 12d | 0d | Damla Bayraktar (PO) | 16h |
| 74 | 1.3.6.2 | Kuruma Data İletilmesi | 3d | 2026-01-21 | 2026-01-23 | 73 | 12d | 0d | Damla Bayraktar (PO); Seden Çimen (PO); Mehmet Karahasan (PO) | 72h |
| 75 | 1.3.6.3 | Kurum Entegrasyon Geliştirmeleri | 15d | 2026-01-26 | 2026-02-13 | 74 | 12d |  | Kurum | 120h |
| 76 | 1.3.6.4 | Takas Yasal Rapor (BVA) Testi | 2d | 2026-01-21 | 2026-01-22 | 73 | 28d |  |  |  |
| 77 | 1.3.7 | **Test** | 19d | 2026-02-02 | 2026-02-26 |  | 3d |  |  | 176h |
| 78 | 1.3.7.1 | Kart Servis Testleri | 2d | 2026-02-03 | 2026-02-04 | 50 | 19d |  | Seden Çimen (PO) | 16h |
| 79 | 1.3.7.2 | Kurum Servis Testleri | 2d | 2026-02-18 | 2026-02-19 | 58 | 8d |  | Kurum | 16h |
| 80 | 1.3.7.3 | Muhasebe Servis Testleri | 2d | 2026-02-25 | 2026-02-26 | 63 | 3d |  | Takas Operasyon; Kurum | 32h |
| 81 | 1.3.7.4 | Ücret Testleri | 2d | 2026-02-18 | 2026-02-19 | 58 | 8d |  | Mehmet Karahasan (PO) | 16h |
| 82 | 1.3.7.5 | Otorizasyon Testleri | 2d | 2026-02-18 | 2026-02-19 | 58 | 8d |  | Mehmet Karahasan (PO) | 16h |
| 83 | 1.3.7.6 | Kurye Testleri | 2d | 2026-02-02 | 2026-02-03 | 56 | 20d |  | Seden Çimen (PO) | 16h |
| 84 | 1.3.7.7 | SMS Testleri | 2d | 2026-02-09 | 2026-02-10 | 57 | 15d |  | Seden Çimen (PO) | 16h |
| 85 | 1.3.7.8 | Card Transaction | 2d | 2026-02-02 | 2026-02-03 | 44 | 20d |  |  |  |
| 86 | 1.3.7.9 | Yasal Raporlama Testleri | 2d | 2026-02-02 | 2026-02-03 | 44 | 20d |  | Damla Bayraktar (PO) | 16h |
| 87 | 1.3.7.10 | QMR Raporlama Testleri | 2d | 2026-02-02 | 2026-02-03 | 44 | 20d |  | Damla Bayraktar (PO) | 16h |
| 88 | 1.3.7.11 | ACC Dosya Deseni Testleri | 2d | 2026-02-02 | 2026-02-03 | 44 | 20d |  | Eren Şapcı (PO) | 16h |

Notes:
- 57: Codec ile çalıılırsa user tanımı yapılmaktadır. Yoksa kod yazılması gerekir (15 gün)
- 62: Ücret tanımları varsa testin yapıldığına emin olunmalıdır.
- 66: Validasyon kodlarının olduğu liste müşteri ile paylaşılmalıdır. Müşterinin talebine göre tanımlar yapılmalıdır.

| ID | WBS | Task | Type | Duration | Start | Finish | Predecessors | Total slack | Free slack | Resources | Work |
| --- | --- | --- | --- | --- | --- | --- | --- | --- | --- | --- | --- |
| 89 | 1.4 | **3. Kart Basım Çalışmaları** |  | 40.75d | 2026-01-19 | 2026-03-16 | 8 | 7.25d |  |  | 460h |
| 90 | 1.4.1 | **Önkoşullar** |  | 6d | 2026-01-19 | 2026-01-26 |  | 7.25d |  |  | 96h |
| 91 | 1.4.1.1 | BKM'de proje açılır |  | 5d | 2026-01-19 | 2026-01-23 |  | 7.25d | 0d | Nisa Karamemiş (PY); Kurum | 80h |
| 92 | 1.4.1.2 | Projede kullanılacak BIN'ler belirlenir ve BKM sitesine kaydedilir. |  | 1d | 2026-01-26 | 2026-01-26 | 91 | 7.25d | 0d | Kurum | 8h |
| 93 | 1.4.1.3 | Kart basım ofisi (Plastkart/AustriaCard/Ekart/Bileşim) LoA dokümanı ChipXpert ekibine iletilir (kick-off) |  | 0.5d | 2026-01-26 | 2026-01-26 | 91 | 7.75d | 0.5d | Nisa Karamemiş (PY); Kurum | 8h |
| 94 | 1.4.1.4 | Checklist (CXP Job Formu) doldurulur | milestone | 0d | 2026-01-26 | 2026-01-26 | 91, 92, 93 | 7.25d | 0d | Nisa Karamemiş (PY) |  |
| 95 | 1.4.2 | Key Management ekibi tarafından AC /MAC / ENC /CVC3 key'leri oluşturulur. BIN bazlı basım firması değişirse PEK ve KEK key'leri tekrar oluşturulur. |  | 1.5d | 2026-01-27 | 2026-01-28 | 94 | 8d | 0d | Erdem Eminağa (KMO) | 12h |
| 96 | 1.4.3 | Ocean kart yönetim ekibinden input data dosyası/dosyaları chipXpert ekibine iletilir |  | 1d | 2026-01-28 | 2026-01-29 | 95 | 8d | 0.75d | Nisa Karamemiş (PY) | 8h |
| 97 | 1.4.4 | **Chip sertifika süreci - Test** |  | 1.75d | 2026-01-27 | 2026-01-28 |  | 7.25d |  |  | 18h |
| 98 | 1.4.4.1 | Belirlenmiş olan her BIN için RSA key pair HSM'den oluşturulur |  | 0.5d | 2026-01-27 | 2026-01-27 | 94 | 7.25d | 0d | Mehmet Cemal Kelleci (CX) | 4h |
| 99 | 1.4.4.2 | Test Kurum ve BIN Tanımları |  | 0.5d | 2026-01-27 | 2026-01-27 | 94 | 7.25d | 0d | Mehmet Cemal Kelleci (CX) | 4h |
| 100 | 1.4.4.3 | Üretilen RSA keyler ile ChipXpert uygulaması üzerinden IPK certreq dosyaları oluşturulur |  | 0.5d | 2026-01-27 | 2026-01-27 | 98, 99 | 7.25d | 0d | Mehmet Cemal Kelleci (CX) | 4h |
| 101 | 1.4.4.4 | Certreq dosyası BKM'ye gönderilir |  | 0.5d | 2026-01-28 | 2026-01-28 | 100 | 7.25d | 0d | Mehmet Cemal Kelleci (CX) | 4h |
| 102 | 1.4.4.5 | BKM gelen sertifika dosyası ChipXpert uygulamasına import edilir. |  | 0.25d | 2026-01-28 | 2026-01-28 | 101 | 7.25d | 0d | Mehmet Cemal Kelleci (CX) | 2h |
| 103 | 1.4.5 | **ChipXpert Job Testleri** |  | 14.75d | 2026-01-19 | 2026-02-06 |  | 15d | 0d |  | 72h |
| 104 | 1.4.5.1 | Kart profilleri oluşturulur |  | 2d | 2026-01-19 | 2026-01-20 |  | 45d |  | Mehmet Cemal Kelleci (CX) | 16h |
| 105 | 1.4.5.2 | ChipXpert uygulamasında job tanımları yapılır |  | 1.5d | 2026-01-28 | 2026-01-30 | 102 | 7.25d | 0d | Mehmet Cemal Kelleci (CX) | 12h |
| 106 | 1.4.5.3 | Kart basım dosyası chipXpert uygulamasında üretililir. End to end test yapılır. |  | 1.5d | 2026-01-30 | 2026-02-02 | 105, 96 | 7.25d | 0d | Mehmet Cemal Kelleci (CX) | 12h |
| 107 | 1.4.5.4 | Üretilen kart basım dosyası sistem operasyon ekibi tarafından ilgili kart basım firmasına (AustriaCard, Bileşim, Ekart,Plastkart) SFTP üzerinden iletilir. (Test ortamında sftp yetkisi varsa chipXpert gönderiyor.) |  | 1d | 2026-02-02 | 2026-02-03 | 106 | 7.25d | 0d | Bilal Yenal (SisOps) | 8h |
| 108 | 1.4.5.5 | Basımı tamamlanan fiziki test kart(lar)ı ChipXpert ekibine iletilir. |  | 2d | 2026-02-03 | 2026-02-05 | 107 | 7.25d | 0d | Kart Basım Firması | 16h |
| 109 | 1.4.5.6 | Basılan kartın testleri Perseval PRO uygulamasında yapılır |  | 1d | 2026-02-05 | 2026-02-06 | 108 | 7.25d | 0d | Mehmet Cemal Kelleci (CX) | 8h |
| 110 | 1.4.5.7 | Testte başarılı olmayan tagler tespit edilirse, chipXpert ekibi tarafından düzeltilir | inactive | 7d | 2026-02-06 | 2026-02-17 | 109 | 0.25d | 0d | Mehmet Cemal Kelleci (CX) | 56h |
| 111 | 1.4.5.8 | Testte tüm taglerin başarılı olarak geçmesi | milestone, inactive | 0d | 2026-02-17 | 2026-02-17 | 110 | 0.25d | 0d | Mehmet Cemal Kelleci (CX) |  |
| 112 | 1.4.6 | Perseval PRO test sonucu ve kart imaj dosyası .XML uzantılı olarak çıkartılır | milestone | 0d | 2026-02-06 | 2026-02-06 | 111 | 7.25d | 0d | Mehmet Cemal Kelleci (CX) |  |
| 113 | 1.4.7 | ICS formu müşteri Kurum ve chipXpert ekibi tarafından doldurulur. |  | 2d | 2026-02-06 | 2026-02-10 | 112 | 7.25d | 0d | Mehmet Cemal Kelleci (CX); Kurum | 32h |
| 114 | 1.4.8 | Kartlar, BKM profil, ICS dökümanı, LOA BKM'ye gönderilir. |  | 1d | 2026-02-10 | 2026-02-11 | 113 | 7.25d | 0d | Mehmet Cemal Kelleci (CX) | 8h |
| 115 | 1.4.9 | BKM, gönderilen chipte değişmesi gereken bir değer veya düzeltilmesi gereken bir hata bulursa ChipXpert Job Testleri tekrarlanır. | inactive | 10d | 2026-02-11 | 2026-02-25 | 114 | -2.75d | 0d | Mehmet Cemal Kelleci (CX); BKM | 160h |
| 116 | 1.4.10 | Kart testleri başarılıysa BKM, sertifikasyon onay mektubu gönderir |  | 3d | 2026-02-11 | 2026-02-16 | 115 | 7.25d | 0d | BKM | 24h |
| 117 | 1.4.11 | Prod kart basım süreci başlar | milestone | 0d | 2026-02-16 | 2026-02-16 | 116 | 7.25d | 0d |  |  |

| ID | WBS | Task | Type | Duration | Start | Finish | Predecessors | Total slack | Free slack | Resources | Work |
| --- | --- | --- | --- | --- | --- | --- | --- | --- | --- | --- | --- |
| 118 | 1.4.12 | **Chip sertifika süreci - Prod** |  | 27.25d | 2026-01-27 | 2026-03-05 |  | 7.25d |  |  | 82h |
| 119 | 1.4.12.1 | Prod süreci için ChipXpert ekibinden iki kişi Ayazağa ofisinde bulunan HSA (High Security Area) alanında çalışma yapmak üzere planlama yapar | milestone | 0d | 2026-02-16 | 2026-02-16 | 117 | 7.25d | 0d | Mehmet Cemal Kelleci (CX) |  |
| 120 | 1.4.12.2 | Control-M tanımları ve job chain Sistem Monitoring Ekibi tarafından tamamlanır |  | 4d | 2026-02-16 | 2026-02-20 | 117 | 7.25d | 0d | Yusuf Kılıç (DevOps) | 32h |
| 121 | 1.4.12.3 | Thales HSM ve Safenet HSM'de keyler üretilir. Key Management ekibi tarafından AC /MAC / ENC /CVC3 key'leri oluşturulur. BIN bazlı basım firması değişirse PEK ve KEK key'leri tekrar oluşturulur. |  | 1.5d | 2026-01-27 | 2026-01-28 | 94 | 24.5d | 17.25d | Erdem Eminağa (KMO) | 12h |
| 122 | 1.4.12.4 | Ocean kart yönetim ekibinden input data dosyası/dosyaları chipXpert ekibine iletilir |  | 1d | 2026-02-20 | 2026-02-23 | 121, 120 | 7.25d | 0d | Seden Çimen (PO) | 8h |
| 123 | 1.4.12.5 | HSA'ya gidilir | milestone | 0d | 2026-02-23 | 2026-02-23 | 119FS+5d, 122 | 7.25d | 0d | Mehmet Cemal Kelleci (CX) |  |
| 124 | 1.4.12.6 | Belirlenmiş olan her BIN için RSA key pair HSM'den oluşturulur |  | 0.25d | 2026-02-23 | 2026-02-23 | 123 | 7.25d | 0d | Mehmet Cemal Kelleci (CX) | 2h |
| 125 | 1.4.12.7 | Üretilen RSA keyler ile ChipXpert uygulaması üzerinden IPK certreq dosyaları oluşturulur |  | 0.25d | 2026-02-24 | 2026-02-24 | 124 | 7.25d | 0d | Mehmet Cemal Kelleci (CX) | 2h |
| 126 | 1.4.12.8 | Certreq dosyası sistem operasyon ekibi tarafından BKM’ye gönderilir. |  | 0.5d | 2026-02-24 | 2026-02-24 | 125 | 7.25d | 0d | Bilal Yenal (SisOps) | 4h |
| 127 | 1.4.12.9 | BKM sertifika dosyasını iletir |  | 0.25d | 2026-02-24 | 2026-02-24 | 126 | 7.25d | 0d | BKM | 2h |
| 128 | 1.4.12.10 | BKM'den gelen sertifika sistem operasyon ekibi tarafından ChipXpert ekibine iletir. (.ipkc uzantılı) ChipXpert uygulamasına import edilir. |  | 0.25d | 2026-03-03 | 2026-03-03 | 127, 141 | 7.25d | 0d | Mehmet Cemal Kelleci (CX); Bilal Yenal (SisOps) | 4h |
| 129 | 1.4.12.11 | ChipXpert uygulamasında job tanımları yapılır |  | 1d | 2026-03-03 | 2026-03-04 | 128 | 7.25d | 0d | Mehmet Cemal Kelleci (CX) | 8h |
| 130 | 1.4.12.12 | Kart basım dosyası chipXpert uygulamasında üretililir.End to end test yapılır. |  | 1d | 2026-03-04 | 2026-03-05 | 129 | 7.25d | 0d | Mehmet Cemal Kelleci (CX) | 8h |
| 131 | 1.4.13 | Üretilen kart basım dosyası sistem operasyon ekibi tarafından ilgili kart basım firmasına (AustriaCard, Bileşim, Ekart,Plastkart) SFTP üzerinden iletilir. |  | 0.5d | 2026-03-05 | 2026-03-05 | 130 | 7.25d | 0d | Bilal Yenal (SisOps) | 4h |
| 132 | 1.4.14 | Prod kartlar müşteri testleri için müşteriye gönderilir. |  | 2d | 2026-03-05 | 2026-03-09 | 131 | 7.25d | 0d | Kurum | 16h |
| 133 | 1.4.15 | Müşteri Kurum tarafında kart testlerinde bir sorun çıkarsa 41. adıma dönülerek süreç tekrarlanır. | inactive | 5.5d | 2026-03-09 | 2026-03-17 | 132 | 1.75d | 0d | Kurum | 44h |
| 134 | 1.4.16 | Prod kart testlerinin tamamlanarak, müşteri tarafından onayın alınması ile süreç tamamlanır. |  | 5d | 2026-03-09 | 2026-03-16 | 133 | 7.25d | 0d | Nisa Karamemiş (PY); Kurum | 80h |
| 135 | 1.4.17 | Prod testlerinde müşteriye destek verilir |  | 1d | 2026-03-13 | 2026-03-16 | 134FF | 7.25d |  | Mehmet Cemal Kelleci (CX) | 8h |
| 136 | 1.5 | **4. Şema Sertifikasyonu** |  | 31d | 2026-01-19 | 2026-03-02 | 8 | 17d |  |  | 184h |
| 137 | 1.5.1 | Şema Proje Açılışı |  | 1d | 2026-01-19 | 2026-01-19 |  | 47d |  | Kurum | 8h |
| 138 | 1.5.2 | Online Erişimler için Kullanıcı Tanımlarının Yapılması |  | 1d | 2026-01-19 | 2026-01-19 |  | 47d |  | Mehmet Karahasan (PO) | 8h |
| 139 | 1.5.3 | Chip Profil Sertifikasyonu |  | 1d | 2026-02-06 | 2026-02-09 | 103 | 32.25d |  | Mehmet Cemal Kelleci (CX) | 8h |
| 140 | 1.5.4 | CPV Onayı |  | 1d | 2026-01-19 | 2026-01-19 |  | 46d | 1d | BKM | 8h |
| 141 | 1.5.5 | **Comfort Testler** |  | 4d | 2026-02-25 | 2026-03-02 |  | 7.25d | 0d |  | 32h |
| 142 | 1.5.5.1 | Otorizasyon |  | 3d | 2026-02-25 | 2026-02-27 | 127 | 7.25d | 0d | Mehmet Karahasan (PO) | 24h |
| 143 | 1.5.5.2 | Takas |  | 1d | 2026-03-02 | 2026-03-02 | 142 | 7.25d |  | Eren Şapcı (PO) | 8h |
| 144 | 1.5.6 | Kart Tasarımının Onaylanması |  | 10d | 2026-01-19 | 2026-01-30 |  | 38d |  | BKM | 80h |
| 145 | 1.5.7 | BIN Live Olması (Issuer Teminat Yatırmasına Göre Değişiklik Gösterebilir) |  | 2d | 2026-01-19 | 2026-01-20 |  | 45d | 0d | Kurum; BKM | 32h |
| 146 | 1.5.8 | Proje Kapanış Onayı |  | 1d | 2026-01-21 | 2026-01-21 | 140, 145 | 45d |  | BKM | 8h |

| ID | WBS | Task | Duration | Start | Finish | Predecessors | Total slack | Free slack | Constraint | Resources | Work |
| --- | --- | --- | --- | --- | --- | --- | --- | --- | --- | --- | --- |
| 147 | 1.6 | **5. BKM Sertifikasyonu** | 17d | 2026-02-18 | 2026-03-12 | 50, 58 | 0d |  |  |  | 736h |
| 148 | 1.6.1 | BKM Express (MC ve VISA Üye olunduğunda Zorunlu) | 1d | 2026-02-18 | 2026-02-18 |  | 16d |  |  | Seden Çimen (PO) | 8h |
| 149 | 1.6.2 | **ACS Sertifikasyonu** | 10d | 2026-02-18 | 2026-03-03 |  | 4d |  |  |  | 256h |
| 150 | 1.6.2.1 | 3D/ACS Entegrasyon Çalışmaları | 2d | 2026-02-18 | 2026-02-19 |  | 10d | 6d |  | Seden Çimen (PO); Mehmet Karahasan (PO) | 32h |
| 151 | 1.6.2.2 | BKM Anahtar Seromoni ve Component Paylaşımı | 8d | 2026-02-18 | 2026-02-27 |  | 4d | 0d |  | Erdem Eminağa (KMO); Kurum; BKM | 192h |
| 152 | 1.6.2.3 | PayCore Anahtar Girişi Sonrası İşlem Testleri | 2d | 2026-03-02 | 2026-03-03 | 151 | 7d |  |  | Seden Çimen (PO); Mehmet Karahasan (PO) | 32h |
| 153 | 1.6.3 | **GO Sertifikasyonu ( Opsiyonel)** | 11d | 2026-02-18 | 2026-03-04 |  | 0d |  |  |  | 200h |
| 154 | 1.6.3.1 | GO Entegrasyon Dokümanlarının Doldurulması | 2d | 2026-02-18 | 2026-02-19 |  | 6d |  |  | Nisa Karamemiş (PY); Kurum | 32h |
| 155 | 1.6.3.2 | BKM Anahtar Seromoni ve Component Paylaşımı | 8d | 2026-02-18 | 2026-02-27 |  | 0d |  |  | BKM; Erdem Eminağa (KMO) | 128h |
| 156 | 1.6.3.3 | Otorizasyon Sertifikasyonu | 3d | 2026-03-02 | 2026-03-04 | 155 | 5d |  |  | Mehmet Karahasan (PO) | 24h |
| 157 | 1.6.3.4 | Takas Sertifikasyonu | 2d | 2026-02-18 | 2026-02-19 |  | 14d |  |  | Eren Şapcı (PO) | 16h |
| 158 | 1.6.4 | **Anahtar Yönetimi (Oceanda Üretilecek Kartlar)** | 9d | 2026-03-02 | 2026-03-12 |  | 0d |  |  |  | 200h |
| 159 | 1.6.4.1 | ACS CAAV-CAVV Anahtar Seremonisi | 5d | 2026-03-02 | 2026-03-06 | 150, 151 | 4d |  | start no earlier than 2026-01-14 | Erdem Eminağa (KMO); BKM | 80h |
| 160 | 1.6.4.2 | GO ExpSign Anahtar Seremonisi | 5d | 2026-03-02 | 2026-03-06 | 154, 155 | 0d |  | start no earlier than 2026-01-14 | Erdem Eminağa (KMO); BKM | 80h |
| 161 | 1.6.4.3 | Kart Basım Anahtarlarının Üretilmesi (OC Kurum ID & BIN) | 1d | 2026-03-09 | 2026-03-09 | 160 | 2d | 0d |  | Erdem Eminağa (KMO) | 8h |
| 162 | 1.6.4.4 | ZPK Anahtarı Üretimi | 1d | 2026-03-09 | 2026-03-09 | 160 | 0d |  |  | Erdem Eminağa (KMO) | 8h |
| 163 | 1.6.4.5 | Issuer ile ZMK ve ZPK Paylaşımı (ilk kurum onboarding) | 1d | 2026-03-10 | 2026-03-10 | 162 | 0d |  |  | Erdem Eminağa (KMO) | 8h |
| 164 | 1.6.4.6 | Kart Basım Firması ZMK Paylaşımı (Firma yeni ise) | 1d | 2026-03-11 | 2026-03-11 | 163 | 0d |  | start no earlier than 2026-01-14 | Erdem Eminağa (KMO) | 8h |
| 165 | 1.6.4.7 | Kart Basım Firması ile KEK-PEK Paylaşımı | 1d | 2026-03-12 | 2026-03-12 | 164 | 0d |  | start no earlier than 2026-01-18 | Erdem Eminağa (KMO) | 8h |
| 166 | 1.6.5 | **BIN ve Yetki Tanımları** | 12d | 2026-02-18 | 2026-03-05 |  | 5d |  |  |  | 72h |
| 167 | 1.6.5.1 | BKM PYS Tanımları - BIN Bülten | 1d | 2026-02-18 | 2026-02-18 |  | 16d |  |  | Kurum; BKM | 16h |
| 168 | 1.6.5.2 | BKM GO URL Tanımları | 1d | 2026-03-05 | 2026-03-05 | 153 | 5d |  |  | Kurum; BKM | 16h |
| 169 | 1.6.5.3 | Kurum FTP Klasör Adının Sistem Operasyona İletilmesi | 2d | 2026-02-18 | 2026-02-19 |  | 15d |  |  | Nisa Karamemiş (PY) | 16h |
| 170 | 1.6.5.4 | PYS Üzerinden Kurum Adına Sistem Operasyona Yetki Talep Edilmesi | 1d | 2026-02-18 | 2026-02-18 |  | 16d |  |  | İbrahim Hakkı Göğüs; Adem Öcalan; Zeynep Özençman (Mngr) | 24h |

Notes:
- 161: Çarşamba Ofis günü öncesi anahtarların üretilmesini Erdem'e iletmek gerekmektedir.
- 169: Mevcutta Bilal Yenal'ın BKM FTP'sine erişimi bulunmaktadır. Banka için belirlenmiş FTP Klasör adının BKM'den talep edilmesi gerekmektedir.
- 170: PayCore BKM Süper Kullanıcıları tarafından (Adem Öcalan/Zeynep Özençman/İbrahim Hakkı Göğüs) sistem operasyon ekibimizden Bilal Yenal adına Banka bazlı yetki talep edilmelidir. Takas dosyalarına FTP'de erişilmesi için önemlidir.

| ID | WBS | Task | Type | Duration | Start | Finish | Predecessors | Total slack | Free slack | Resources | Work |
| --- | --- | --- | --- | --- | --- | --- | --- | --- | --- | --- | --- |
| 171 | 1.7 | **6. Prod Ortamın Hazırlanması** |  | 7d | 2026-03-04 | 2026-03-12 | 49 | 0d |  |  | 160h |
| 172 | 1.7.1 | Fraud Operasyon Workshop |  | 2d | 2026-03-04 | 2026-03-05 |  | 5d |  | Adem Öcalan | 16h |
| 173 | 1.7.2 | Kart Operasyon Ocean Ekran Anlatımı |  | 2d | 2026-03-04 | 2026-03-05 |  | 5d |  | Zeynep Özençman (Mngr) | 16h |
| 174 | 1.7.3 | Takas Operasyon Workshop |  | 2d | 2026-03-04 | 2026-03-05 |  | 5d |  | Takas Operasyon | 16h |
| 175 | 1.7.4 | Prod Ortam Parametre Tanımlarının Yapılması |  | 3d | 2026-03-04 | 2026-03-06 |  | 4d |  | Zeynep Özençman (Mngr) | 24h |
| 176 | 1.7.5 | Prod Ortam Key tanımları yapıldı mı? |  | 1d | 2026-03-10 | 2026-03-10 | 161, 162 | 2d |  | Erdem Eminağa (KMO); Zeynep Özençman (Mngr) | 16h |
| 177 | 1.7.6 | Prod Ortam Job Chain Tanımlarının Yapılması |  | 2d | 2026-03-04 | 2026-03-05 |  | 5d |  | Damla Bayraktar (PO) | 16h |
| 178 | 1.7.7 | **Production Network & DevOps & SisOps** |  | 7d | 2026-03-04 | 2026-03-12 |  | 0d |  |  | 56h |
| 179 | 1.7.7.1 | Ocean Prod Ortam Load Balancer Tanımları (Network) |  | 1d | 2026-03-04 | 2026-03-04 |  | 0d |  | Timur Bozkurtoğulları (Mngr) | 8h |
| 180 | 1.7.7.2 | Ocean Prod Ortam Firewall Tanımları (Network) |  | 1d | 2026-03-05 | 2026-03-05 | 179 | 0d |  | Timur Bozkurtoğulları (Mngr) | 8h |
| 181 | 1.7.7.3 | Ocean Prod Ortam Erişim Kontrolleri (Network) |  | 1d | 2026-03-06 | 2026-03-06 | 180 | 0d |  | Timur Bozkurtoğulları (Mngr) | 8h |
| 182 | 1.7.7.4 | Ocean Prod Ortam FTP Kullanıcı Yönetimi (Sis Ops) |  | 1d | 2026-03-09 | 2026-03-09 | 181 | 0d |  | Bilal Yenal (SisOps) | 8h |
| 183 | 1.7.7.5 | Ocean Prod Sistem İzleme İletişim Form Doldurulması (Sis Ops) |  | 1d | 2026-03-10 | 2026-03-10 | 182 | 0d |  | Bilal Yenal (SisOps) | 8h |
| 184 | 1.7.7.6 | Ocean Prod Ortam Grafana Monitoring Tanımları (DevOps) |  | 1d | 2026-03-11 | 2026-03-11 | 183 | 0d |  | Yusuf Kılıç (DevOps) | 8h |
| 185 | 1.7.7.7 | İzleme ve Uyarı Tanımlarının Tamamlanması (Sistem Ops) |  | 1d | 2026-03-12 | 2026-03-12 | 184 | 0d |  | Bilal Yenal (SisOps) | 8h |
| 186 | 1.8 | **7. Canlı Geçiş** |  | 5d | 2026-03-13 | 2026-03-19 | 147 | 0d |  |  | 240h |
| 187 | 1.8.1 | Geçiş Planlamasının Yapılması |  | 4d | 2026-03-13 | 2026-03-18 | 171, 178 | 0d |  | Kurum; BKM; Damla Bayraktar (PO); Mehmet Karahasan (PO); Nisa Karamemiş (PY); Seden Çimen (PO) | 192h |
| 188 | 1.8.2 | Canlıya Geçiş |  | 1d | 2026-03-19 | 2026-03-19 | 187 | 0d |  | Kurum; BKM; Damla Bayraktar (PO); Mehmet Karahasan (PO); Nisa Karamemiş (PY); Seden Çimen (PO) | 48h |
| 189 | 1.9 | **8. Pilot Süreci** |  | 4d | 2026-03-20 | 2026-03-25 | 186 | 0d |  |  | 64h |
| 190 | 1.9.1 | Pilot Onayı |  | 1d | 2026-03-20 | 2026-03-20 | 188, 147 | 0d |  | Kurum | 8h |
| 191 | 1.9.2 | NonSecure Ecom İşlem Geçişi |  | 1d | 2026-03-23 | 2026-03-23 | 190 | 0d |  | Kurum | 8h |
| 192 | 1.9.3 | Full Secure Ecom İşlem Geçişi |  | 1d | 2026-03-23 | 2026-03-23 | 150, 190 | 2d |  | Kurum | 8h |
| 193 | 1.9.4 | **Fiziksel Kart Testleri** |  | 3d | 2026-03-20 | 2026-03-24 |  | 1d |  |  | 24h |
| 194 | 1.9.4.1 | Kart Basım Ofisi Takibi |  | 1d | 2026-03-20 | 2026-03-20 |  | 1d | 0d | Kurum | 8h |
| 195 | 1.9.4.2 | Kurye Takibi |  | 2d | 2026-03-23 | 2026-03-24 | 194 | 1d | 0d | Kurum | 16h |
| 196 | 1.9.4.3 | SMS Takibi | milestone | 0d | 2026-03-24 | 2026-03-24 | 195 | 1d | 0d | Kurum |  |
| 197 | 1.9.4.4 | Fiziksel Kart PIN Set Testi | milestone | 0d | 2026-03-24 | 2026-03-24 | 196 | 1d | 0d | Kurum |  |
| 198 | 1.9.4.5 | Fiziksel Kart ile İşlem Geçişi | milestone | 0d | 2026-03-24 | 2026-03-24 | 197 | 1d |  | Kurum |  |
| 199 | 1.9.5 | Incoming Dosya Akışı (Takas) |  | 1d | 2026-03-24 | 2026-03-24 | 191 | 0d |  | Kurum | 8h |
| 200 | 1.9.6 | ACC Dosya Takibi |  | 1d | 2026-03-25 | 2026-03-25 | 199 | 0d |  | Kurum | 8h |
